# MS Project Plan

Schedule from MS Project XML, 2025-01-07 to 2026-05-28, status date 2025-12-05, 6 hours a day, A marks actual dates.

## Calendars

- Standard: Mon-Fri 08:00-12:00, 13:00-17:00; Sat-Sun off. Exceptions (off unless hours are given): 2025-03-21 (Human Rights Day), 2025-04-18 (Good Friday), 2025-04-21 (Family Day), 2025-04-28 (Freedom Day Extra Day), 2025-05-01 (Workers Day), 2025-10-06 to 2025-10-10 (Ewald Leave).

## Resources

| Resource |
| --- |
| Jill |
| All |
| Jorg |
| Anne |
| Jill / Inge |
| Kevin |
| Arc |
| Jeandre |
| Andrew |
| Ewald |
| James |
| Victor |
| Gary |
| HS |
| JdV |
| GS |
| VT |
| KD |
| KD / HS |
| tbc |
| RF / KD |
| RF |
| JB/MM |
| JB / MM |
| HS / KD |
| KD / JB / MM |
| VT / JK |
| JdV / MM / AE |
| MM |
| MM / AE |
| NYDA |
| Ew |
| H&C |
| Ewald / Leonard |
| PV |
| EW/LN |
| EV |
| EV/LN |

## Schedule

| ID | WBS | Task | Duration | Start | Finish | Predecessors | Complete | Remaining | Baseline start | Baseline finish | Baseline duration | Baseline 1 start | Baseline 1 finish | Total slack | Free slack | Constraint | Resources | Work | Actual work | Planned % Complete | Cash Flow | Effort2 | Effort | Cashflow (hrs) | Number2 | Number3 | Cashflow Value | Cashflow Hours | Duration Days |
| --- | --- | --- | --- | --- | --- | --- | --- | --- | --- | --- | --- | --- | --- | --- | --- | --- | --- | --- | --- | --- | --- | --- | --- | --- | --- | --- | --- | --- | --- |
| 1 | 1 | **HC Upgrade** | 127.67d | 2025-09-26 A | 2026-02-13 |  | 48% | 66.91d | 2025-09-26 | 2026-03-13 | 140.67d | 2025-01-07 | 2025-06-18 | 98.67d |  |  |  | 950h | 455.9h | 43.6% |  |  |  |  |  |  |  |  |  |
| 2 | 1.1 | **SPRINT 1: Braintree Migrate Existing Data, Table Schema into BC25 & BC26** | 7.33d | 2025-09-26 A | 2025-10-03 A |  | 100% |  | 2025-09-26 | 2025-10-03 | 7.33d | 2025-01-20 | 2025-01-31 |  |  |  |  | 44h | 44h | 100% |  |  |  |  |  |  |  |  |  |
| 3 | 1.1.1 | Milestone 1: Convert custom code base to "schema" only version | 4h | 2025-09-26 A | 2025-09-26 A |  | 100% |  | 2025-09-26 | 2025-09-26 | 4h | 2025-01-20 | 2025-01-21 |  |  | start no earlier than 2025-09-26 | EV | 4h | 4h | 100% | 5800 | 4 | 4 | 30 | 240 | 1 | 5800 | 4 | 0.08d |
| 4 | 1.1.2 | Milestone 2: Installation BC25 & BC26 | 8h | 2025-09-26 A | 2025-09-29 A | 3 | 100% |  | 2025-09-26 | 2025-09-29 | 8h |  |  |  |  |  | EV | 8h | 8h | 100% | 11600 | 8 | 8 | 60 | 480 | 1 | 11600 | 8 | 0.17d |
| 5 | 1.1.3 | Milestone 3: Initial database upgrade, vanilla upgrade, data & history remains intact | 32h | 2025-09-29 A | 2025-10-03 A | 4 | 100% |  | 2025-09-29 | 2025-10-03 | 32h |  |  |  |  |  | EV | 32h | 32h | 100% | 46400 | 32 | 32 | 240 | 1920 | 1 | 46400 | 32 | 0.67d |
| 6 | 1.2 | **SPRINT 2: H&C Test BC26, Update Customisation List & Share with Braintree** | 28.67d | 2025-10-03 A | 2025-11-10 |  | 95% | 1.43d | 2025-10-03 | 2025-10-17 | 6.67d |  |  | 17.42d |  |  |  | 172h | 163.4h | 100% |  |  |  |  |  |  |  |  |  |
| 7 | 1.2.1 | Milestone 5: Application testing in order to ratify real-world application | 172h | 2025-10-03 A | 2025-11-10 | 5 | 95% | 8.6h | 2025-10-03 | 2025-10-17 | 40h |  |  | 17.42d | 0d |  | H&C | 172h | 163.4h | 100% |  |  |  | 300 | 2400 | 1 |  |  | 3.58d |
| 8 | 1.3 | **SPRINT 3: Braintree Quote Hours Required Per Function & Report in List by H&C** | 19.67d | 2025-11-11 A | 2025-12-01 |  | 89% | 2.25d | 2025-10-17 | 2025-11-17 | 14.67d |  |  | 12d |  |  |  | 110h | 104.5h | 100% |  |  |  |  |  |  |  |  |  |
| 9 | 1.3.1 | Milestone 6: Braintree assign hours per item (functionality & reports) | 110h | 2025-11-11 A | 2025-11-28 | 7 | 95% | 5.5h | 2025-10-17 | 2025-10-31 | 80h |  |  | 12d | 0d |  | EV/LN | 110h | 104.5h | 100% | 11600 | 8 | 8 | 600 | 4800 | 1 | 11600 | 8 | 2.29d |
| 10 | 1.3.2 | GO / NO GO DECISION | 8h | 2025-11-28 | 2025-12-01 | 9 |  |  | 2025-10-31 | 2025-11-17 | 8h |  |  | 12d | 0d |  |  |  |  | 100% |  |  |  | 60 | 480 | 1 |  |  | 0.17d |
| 11 | 1.4 | **SPRINT 4: Braintree Migrate Existing Data, Table Schema into BC25 Then BC26** | 20d | 2025-12-01 A | 2025-12-22 |  | 60% | 8d | 2025-11-17 | 2026-01-19 | 60d |  |  | 0d |  |  |  | 240h | 144h | 32.2% |  |  |  |  |  |  |  |  |  |
| 12 | 1.4.1 | Milestone 8: Braintree update BC26 with agreed functionality & reports | 120h | 2025-12-01 A | 2025-12-22 | 10 | 60% | 48h | 2025-11-17 | 2026-01-19 | 360h |  |  | 0d |  |  | EV/LN | 120h | 72h | 32.2% | 174000 | 120 | 120 | 2700 | 6960 | 2.58 | 174000 | 120 | 2.5d |
| 13 | 1.4.2 | Milestone 9: PrintVis Update BC26 with agreed functionality & reports | 120h | 2025-12-01 A | 2025-12-22 | 10 | 60% | 48h | 2025-11-17 | 2026-01-19 | 360h |  |  | 0d |  |  | PV | 120h | 72h | 32.2% | 34800 | 24 | 24 | 2700 | 6960 | 2.58 | 34800 | 24 | 2.5d |
| 14 | 1.5 | **SPRINT 5: User Acceptance Testing** | 40d | 2025-12-22 | 2026-02-02 |  |  |  | 2026-01-19 | 2026-03-02 | 40d |  |  | 0d |  |  |  | 240h |  | 0% |  |  |  |  |  |  |  |  |  |
| 15 | 1.5.1 | Milestone 11: User acceptance testing of SPRINT 4 functionality & report deployment | 240h | 2025-12-22 | 2026-02-02 | 13, 12 |  |  | 2026-01-19 | 2026-03-02 | 240h |  |  | 0d |  |  | H&C | 240h |  | 0% |  |  |  | 1800 |  |  |  |  | 5d |
| 16 | 1.6 | **SPRINT 6: Braintree Functionality Testing BC18 vs. BC26** | 12d | 2026-02-02 | 2026-02-13 |  |  |  | 2026-03-02 | 2026-03-13 | 12d |  |  | 0d |  |  |  | 144h |  | 0% |  |  |  |  |  |  |  |  |  |
| 17 | 1.6.1 | Milestone 12: Braintree functional investigation & testing BC18 vs. BC26 | 72h | 2026-02-02 | 2026-02-13 | 15 |  |  | 2026-03-02 | 2026-03-13 | 72h |  |  | 98.67d |  |  | EV/LN | 72h |  | 0% | 104400 | 72 | 72 | 540 |  |  | 104400 | 72 | 1.5d |
| 18 | 1.6.2 | Milestone 13: Printvis functional investigation & testing BC18 vs. BC26 | 72h | 2026-02-02 | 2026-02-13 | 15 |  |  | 2026-03-02 | 2026-03-13 | 72h |  |  | 0d |  |  | PV | 72h |  | 0% | 34800 | 24 | 24 | 540 |  |  | 34800 | 24 | 1.5d |
| 19 | 2 | **SPRINT 7: User Acceptance Testing** | 13.33d | 2026-02-13 | 2026-02-27 |  |  |  | 2026-03-13 | 2026-03-27 | 13.33d |  |  | 0d |  |  |  | 80h |  | 0% |  |  |  |  |  |  |  |  |  |
| 20 | 2.1 | Milestone 15: User acceptance testing of SPRINT 6 functionality & report deployment | 80h | 2026-02-13 | 2026-02-27 | 18 |  |  | 2026-03-13 | 2026-03-27 | 80h |  |  | 0d |  |  | H&C | 80h |  | 0% |  |  |  | 600 |  |  |  |  | 1.67d |
| 21 | 3 | **SPRINT 8: Develop & Deploy Additional Customisations Back Into System** | 26.67d | 2026-02-27 | 2026-03-27 |  |  |  | 2026-03-27 | 2026-04-24 | 26.67d |  |  | 0d |  |  |  | 320h |  | 0% |  |  |  |  |  |  |  |  |  |
| 22 | 3.1 | Milestone 16: Braintree development of functionality & reports | 160h | 2026-02-27 | 2026-03-27 | 20 |  |  | 2026-03-27 | 2026-04-24 | 160h |  |  | 58.67d |  |  | EV/LN | 160h |  | 0% | 174000 | 120 | 120 | 1200 |  |  | 174000 | 120 | 3.33d |
| 23 | 3.2 | Milestone 17: Printvis development of functionality & reports | 160h | 2026-02-27 | 2026-03-27 | 20 |  |  | 2026-03-27 | 2026-04-24 | 160h |  |  | 0d |  |  | EV/LN | 160h |  | 0% | 34800 | 24 | 24 | 1200 |  |  | 34800 | 24 | 3.33d |
| 24 | 4 | **SPRINT 9: User Acceptance Testing & Sign-Off** | 14.67d | 2026-03-27 | 2026-04-13 |  |  |  | 2026-04-24 | 2026-05-11 | 14.67d |  |  | 0d |  |  |  | 88h |  | 0% |  |  |  |  |  |  |  |  |  |
| 25 | 4.1 | Milestone 19: User acceptance testing of SPRINT 8 functionality & report deployment | 80h | 2026-03-27 | 2026-04-10 | 23 |  |  | 2026-04-24 | 2026-05-08 | 80h |  |  | 0d |  |  | H&C | 80h |  | 0% |  |  |  | 600 |  |  |  |  | 1.67d |
| 26 | 4.2 | Milestone 20: User departmental sign-off | 8h | 2026-04-10 | 2026-04-13 | 25 |  |  | 2026-05-08 | 2026-05-11 | 8h |  |  | 0d |  |  | H&C | 8h |  | 0% |  |  |  | 60 |  |  |  |  | 0.17d |

| ID | WBS | Task | Type | Duration | Start | Finish | Predecessors | Baseline start | Baseline finish | Baseline duration | Total slack | Resources | Work | Planned % Complete | Cashflow (hrs) | Duration Days | Cash Flow | Effort2 | Effort | Cashflow Value | Cashflow Hours |
| --- | --- | --- | --- | --- | --- | --- | --- | --- | --- | --- | --- | --- | --- | --- | --- | --- | --- | --- | --- | --- | --- |
| 27 | 5 | **SPRINT 10: Go-Live Simulation** |  | 40d | 2026-04-13 | 2026-05-25 |  | 2026-05-11 | 2026-06-22 | 40d | 0d |  | 240h | 0% |  |  |  |  |  |  |  |
| 28 | 5.1 | Milestone 21: Rebuild PowerBI, SSRS reports |  | 80h | 2026-04-13 | 2026-04-27 | 26 | 2026-05-11 | 2026-05-25 | 80h | 0d | H&C | 80h | 0% | 600 | 1.67d |  |  |  |  |  |
| 29 | 5.2 | Milestone 22: Go-live simulation Braintree |  | 80h | 2026-04-27 | 2026-05-11 | 28 | 2026-05-25 | 2026-06-08 | 80h | 0d | EW/LN | 80h | 0% | 600 | 1.67d | 46400 | 32 | 32 | 46400 | 32 |
| 30 | 5.3 | Milestone 23: Go-live simulation Printvis |  | 80h | 2026-05-11 | 2026-05-25 | 29 | 2026-06-08 | 2026-06-22 | 80h | 0d | EW/LN | 80h | 0% | 600 | 1.67d | 11600 | 8 | 8 | 11600 | 8 |
| 31 | 6 | **SPRINT 11: Go-Live Run** |  | 470.33d | 2025-01-07 | 2026-05-28 |  | 2026-06-22 | 2026-06-25 | 4d | 0d |  | 24h | 0% |  |  |  |  |  |  |  |
| 32 | 6.1 | Milestone 25: Go-live |  | 24h | 2026-05-25 | 2026-05-28 | 30 | 2026-06-22 | 2026-06-25 | 24h | 0d | EW/LN | 24h | 0% | 180 | 0.5d | 34800 | 24 | 24 | 34800 | 24 |
| 35 | 6.2 | Delayed | milestone | 0h | 2025-01-07 | 2025-01-07 |  |  |  |  | 470.33d |  |  | 0% |  |  |  |  |  |  |  |
| 36 | 6.3 | Additional time allocated due to expected workload | milestone | 0h | 2025-01-07 | 2025-01-07 |  |  |  |  | 470.33d |  |  | 0% |  |  |  |  |  |  |  |
